# Projecto_PASS

Schedule from MS Project, 2013-03-25 to 2013-06-27, A marks actual dates.

## Calendars

- Standard: Mon-Fri 08:00-12:00, 13:00-17:00; Sat-Sun off.

## Resources

| Resource |
| --- |
| Cláudio Esperança |
| Diogo Serra |

## Schedule

| ID | WBS | Task | Duration | Start | Finish | Predecessors | Complete | Baseline start | Baseline finish | Baseline duration | Resources | Work | Actual work |
| --- | --- | --- | --- | --- | --- | --- | --- | --- | --- | --- | --- | --- | --- |
| 1 | 1 | **ONYX** | 69d | 2013-03-25 08:00 A | 2013-06-27 23:15 A |  | 100% | 2013-03-25 08:00 | 2013-06-06 23:42 | 54d |  | 316h | 316h |
| 2 | 1.1 | **Gestão de Projeto** | 64d | 2013-03-25 08:00 A | 2013-06-20 22:12 A |  | 100% | 2013-03-25 08:00 | 2013-06-03 23:42 | 51d |  | 127h | 127h |
| 3 | 1.1.1 | **Planeamento** | 63d | 2013-03-25 19:00 A | 2013-06-20 22:12 A |  | 100% | 2013-03-25 19:00 | 2013-06-03 23:42 | 50d |  | 76h | 76h |
| 4 | 1.1.1.1 | **Âmbito** | 18d | 2013-03-25 19:00 A | 2013-04-18 20:00 A |  | 100% | 2013-03-25 19:00 | 2013-04-08 20:00 | 10d |  | 19h | 19h |
| 5 | 1.1.1.1.1 | **Planeamento do âmbito** | 8d | 2013-03-25 19:00 A | 2013-04-04 22:30 A |  | 100% | 2013-03-25 19:00 | 2013-04-04 22:30 | 8d |  | 6h | 6h |
| 6 | 1.1.1.1.1.1 | Resultados do projeto | 0.12d | 2013-03-25 19:00 A | 2013-03-25 21:30 A |  | 100% | 2013-03-25 19:00 | 2013-03-25 21:30 | 0.12d | Cláudio Esperança; Diogo Serra | 1h | 1h |
| 7 | 1.1.1.1.1.2 | Objectivos do projeto | 0.06d | 2013-04-04 20:00 A | 2013-04-04 20:30 A | 6 | 100% | 2013-04-04 20:00 | 2013-04-04 20:30 | 0.06d | Cláudio Esperança; Diogo Serra | 1h | 1h |
| 8 | 1.1.1.1.1.3 | Entregas do projeto | 0.06d | 2013-04-04 20:30 A | 2013-04-04 21:00 A | 7 | 100% | 2013-04-04 20:30 | 2013-04-04 21:00 | 0.06d | Cláudio Esperança; Diogo Serra | 1h | 1h |
| 9 | 1.1.1.1.1.4 | Fronteiras do projeto | 0.06d | 2013-04-04 21:00 A | 2013-04-04 21:30 A | 8 | 100% | 2013-04-04 21:00 | 2013-04-04 21:30 | 0.06d | Cláudio Esperança; Diogo Serra | 1h | 1h |
| 10 | 1.1.1.1.1.5 | Pressupostos do projeto | 0.06d | 2013-04-04 21:30 A | 2013-04-04 22:00 A | 9 | 100% | 2013-04-04 21:30 | 2013-04-04 22:00 | 0.06d | Cláudio Esperança; Diogo Serra | 1h | 1h |
| 11 | 1.1.1.1.1.6 | Restrições do projeto | 0.06d | 2013-04-04 22:00 A | 2013-04-04 22:30 A | 10 | 100% | 2013-04-04 22:00 | 2013-04-04 22:30 | 0.06d | Cláudio Esperança; Diogo Serra | 1h | 1h |
| 12 | 1.1.1.1.2 | **Descrição do âmbito** | 10d | 2013-04-04 22:30 A | 2013-04-18 20:00 A |  | 100% | 2013-04-04 22:30 | 2013-04-08 20:00 | 2d |  | 13h | 13h |
| 13 | 1.1.1.1.2.1 | Requisitos do projeto | 0.25d | 2013-04-04 22:30 A | 2013-04-08 18:30 A | 5 | 100% | 2013-04-04 22:30 | 2013-04-05 00:00 | 0.19d | Cláudio Esperança; Diogo Serra | 4h | 4h |
| 14 | 1.1.1.1.2.2 | WBS | 1.75d | 2013-04-08 18:00 A | 2013-04-18 20:00 A | 13 | 100% | 2013-04-08 18:00 | 2013-04-08 20:00 | 0.25d | Cláudio Esperança; Diogo Serra | 9h | 9h |
| 15 | 1.1.1.2 | **Gestão do Tempo** | 15d | 2013-04-18 20:00 A | 2013-05-09 20:15 A |  | 100% | 2013-04-08 20:00 | 2013-04-25 19:15 | 13d |  | 30h | 30h |
| 16 | 1.1.1.2.1 | Definição de actividades | 0.75d | 2013-04-18 20:00 A | 2013-04-22 20:00 A | 14 | 100% | 2013-04-08 20:00 | 2013-04-08 23:00 | 0.38d | Cláudio Esperança; Diogo Serra | 12h | 12h |
| 17 | 1.1.1.2.2 | Sequência de actividades | 1d | 2013-04-22 20:00 A | 2013-05-02 20:00 A | 16 | 100% | 2013-04-08 23:00 | 2013-04-18 21:00 | 0.5d | Cláudio Esperança; Diogo Serra | 8h | 8h |
| 18 | 1.1.1.2.3 | Estimativa da duração das actividades | 1d | 2013-05-02 20:00 A | 2013-05-09 19:15 A | 17 | 100% | 2013-04-18 21:00 | 2013-04-25 18:15 | 0.5d | Cláudio Esperança; Diogo Serra | 8h | 8h |
| 19 | 1.1.1.2.4 | Desenvolvimento do cronograma | 0.12d | 2013-05-09 19:15 A | 2013-05-09 20:15 A | 18 | 100% | 2013-04-25 18:15 | 2013-04-25 19:15 | 0.12d | Cláudio Esperança; Diogo Serra | 2h | 2h |
| 20 | 1.1.1.3 | Planeamento de recursos | 0.47d | 2013-05-09 20:15 A | 2013-05-10 00:00 A | 15 | 100% | 2013-04-25 19:15 | 2013-04-25 23:00 | 0.47d | Cláudio Esperança; Diogo Serra | 4h | 4h |
| 21 | 1.1.1.4 | Gantt | 1.25d | 2013-05-13 18:15 A | 2013-06-03 22:00 A | 20 | 100% | 2013-04-25 23:15 | 2013-05-17 00:00 | 0.5d | Cláudio Esperança; Diogo Serra | 10h | 10h |
| 22 | 1.1.1.5 | Estimativa de custos | 0.12d | 2013-06-03 22:00 A | 2013-06-06 20:12 A | 21 | 100% | 2013-05-20 18:00 | 2013-05-20 22:12 | 0.12d | Cláudio Esperança; Diogo Serra | 1h | 1h |
| 23 | 1.1.1.6 | **Gestão do risco** | 10d | 2013-06-06 20:12 A | 2013-06-20 19:12 A |  | 100% | 2013-05-20 22:12 | 2013-06-03 20:42 | 10d |  | 10h | 10h |
| 24 | 1.1.1.6.1 | Identificação dos riscos | 0.25d | 2013-06-06 20:12 A | 2013-06-10 22:42 A | 22 | 100% | 2013-05-20 22:12 | 2013-05-27 18:42 | 0.25d | Cláudio Esperança; Diogo Serra | 2h | 2h |
| 25 | 1.1.1.6.2 | Matriz probabilidade de impacto | 0.25d | 2013-06-10 22:42 A | 2013-06-13 20:42 A | 24 | 100% | 2013-05-27 18:42 | 2013-05-27 22:42 | 0.25d | Cláudio Esperança; Diogo Serra | 2h | 2h |
| 26 | 1.1.1.6.3 | Ranking do risco | 0.12d | 2013-06-13 20:42 A | 2013-06-13 21:42 A | 25 | 100% | 2013-05-27 22:42 | 2013-05-27 23:42 | 0.12d | Cláudio Esperança; Diogo Serra | 2h | 2h |
| 27 | 1.1.1.6.4 | Planeamento de respostas a riscos | 0.5d | 2013-06-13 21:42 A | 2013-06-20 19:12 A | 26 | 100% | 2013-05-27 23:42 | 2013-06-03 20:42 | 0.38d | Cláudio Esperança; Diogo Serra | 4h | 4h |

| ID | WBS | Task | Duration | Start | Finish | Predecessors | Complete | Baseline start | Baseline finish | Baseline duration | Resources | Work | Actual work |
| --- | --- | --- | --- | --- | --- | --- | --- | --- | --- | --- | --- | --- | --- |
| 28 | 1.1.1.7 | **Comunicação** | 45d | 2013-04-18 19:00 A | 2013-06-20 22:12 A |  | 100% | 2013-04-18 19:00 | 2013-06-03 23:42 | 32d |  | 2h | 2h |
| 29 | 1.1.1.7.1 | Planeamento das comunicações | 0.06d | 2013-06-20 19:12 A | 2013-06-20 21:57 A | 27 | 100% | 2013-06-03 20:42 | 2013-06-03 23:27 | 0.06d | Cláudio Esperança; Diogo Serra | 0.5h | 0.5h |
| 30 | 1.1.1.7.2 | Requisitos das comunicações | 0.03d | 2013-06-20 21:57 A | 2013-06-20 22:12 A | 29 | 100% | 2013-06-03 23:27 | 2013-06-03 23:42 | 0.03d | Cláudio Esperança; Diogo Serra | 0.5h | 0.5h |
| 31 | 1.1.1.7.3 | Tecnologias usadas nas comunicações | 0.06d | 2013-04-18 19:00 A | 2013-04-22 22:15 A | 39 | 100% | 2013-04-18 19:00 | 2013-04-22 22:15 | 0.06d | Cláudio Esperança; Diogo Serra | 0.5h | 0.5h |
| 32 | 1.1.1.7.4 | Plano de gestão de comunicações | 0.06d | 2013-04-22 22:15 A | 2013-04-25 21:00 A | 31 | 100% | 2013-04-22 22:15 | 2013-04-25 21:00 | 0.06d | Cláudio Esperança; Diogo Serra | 0.5h | 0.5h |
| 33 | 1.1.2 | **Execução** | 10d | 2013-04-25 21:15 A | 2013-05-09 22:00 A |  | 100% | 2013-04-25 21:15 | 2013-05-02 20:15 | 5d |  | 15h | 15h |
| 34 | 1.1.2.1 | Registo do progresso | 0.62d | 2013-04-25 21:15 A | 2013-04-29 20:15 A | 32 | 100% | 2013-04-25 21:15 | 2013-04-25 23:15 | 0.25d | Diogo Serra | 5h | 5h |
| 35 | 1.1.2.2 | Acompanhamento da execução das actividades | 0.25d | 2013-05-06 18:00 A | 2013-05-06 20:00 A | 34 | 100% | 2013-04-29 19:15 | 2013-04-29 20:15 | 0.12d | Diogo Serra | 2h | 2h |
| 36 | 1.1.2.3 | Monitorização do risco | 0.5d | 2013-05-06 20:00 A | 2013-05-07 00:00 A | 35 | 100% | 2013-04-29 20:15 | 2013-04-29 23:15 | 0.38d | Diogo Serra | 4h | 4h |
| 37 | 1.1.2.4 | Análise da execução | 0.5d | 2013-05-09 18:00 A | 2013-05-09 22:00 A | 36 | 100% | 2013-04-29 23:15 | 2013-05-02 20:15 | 0.38d | Diogo Serra | 4h | 4h |
| 38 | 1.1.3 | **Documentação** | 18d | 2013-03-25 20:00 A | 2013-04-18 19:00 A |  | 100% | 2013-03-25 20:00 | 2013-04-18 19:00 | 18d |  | 33h | 33h |
| 39 | 1.1.3.1 | Relatório GPI | 3.31d | 2013-03-25 20:00 A | 2013-04-18 19:00 A |  | 100% | 2013-03-25 20:00 | 2013-04-18 19:00 | 3.31d | Cláudio Esperança; Diogo Serra | 30h | 30h |
| 40 | 1.1.3.2 | Gestão de Configurações | 0.38d | 2013-04-11 22:30 A | 2013-04-15 19:30 A |  | 100% | 2013-04-11 22:30 | 2013-04-15 18:30 | 0.25d | Diogo Serra | 3h | 3h |
| 41 | 1.1.4 | **Reuniões** | 19d | 2013-03-25 08:00 A | 2013-04-18 22:00 A |  | 100% | 2013-03-25 08:00 | 2013-04-18 22:00 | 19d |  | 3h | 3h |
| 42 | 1.1.4.1 | Análise | 0.25d | 2013-04-15 18:30 A | 2013-04-18 22:00 A |  | 100% | 2013-04-15 18:30 | 2013-04-18 22:00 | 0.25d | Cláudio Esperança; Diogo Serra | 2h | 2h |
| 43 | 1.1.4.2 | Projeto | 0.06d | 2013-03-25 08:00 A | 2013-03-25 18:30 A |  | 100% | 2013-03-25 08:00 | 2013-03-25 08:00 | 0d | Cláudio Esperança; Diogo Serra | 1h | 1h |
| 44 | 1.2 | **PASS** | 68d | 2013-03-25 18:00 A | 2013-06-27 23:15 A |  | 100% | 2013-03-25 18:00 | 2013-06-06 23:42 | 53d |  | 189h | 189h |
| 45 | 1.2.1 | **Análise Software** | 23d | 2013-03-25 18:00 A | 2013-04-25 23:15 A |  | 100% | 2013-03-25 18:00 | 2013-04-25 20:45 | 23d |  | 18.5h | 18.5h |
| 46 | 1.2.1.1 | **Estudo e pré-análise de soluções** | 23d | 2013-03-25 18:00 A | 2013-04-25 23:15 A |  | 100% | 2013-03-25 18:00 | 2013-04-25 20:45 | 23d |  | 18.5h | 18.5h |
| 47 | 1.2.1.1.1 | Levantamento de requisitos gerais | 0.19d | 2013-03-25 18:00 A | 2013-03-25 19:30 A |  | 100% | 2013-03-25 18:00 | 2013-03-25 19:00 | 0.12d | Cláudio Esperança; Diogo Serra | 3h | 3h |
| 48 | 1.2.1.1.2 | **Pesquisa de soluções** | 8d | 2013-04-15 20:00 A | 2013-04-25 23:15 A |  | 100% | 2013-04-15 19:30 | 2013-04-25 20:45 | 8d |  | 15.5h | 15.5h |
| 49 | 1.2.1.1.2.1 | Comparação de software | 1.75d | 2013-04-15 20:00 A | 2013-04-25 18:30 A | 47 | 100% | 2013-04-15 19:30 | 2013-04-22 22:00 | 1.5d | Cláudio Esperança; Diogo Serra | 14h | 14h |
| 50 | 1.2.1.1.2.2 | Selecção de software | 0.19d | 2013-04-25 18:30 A | 2013-04-25 23:15 A | 49 | 100% | 2013-04-22 22:00 | 2013-04-25 20:45 | 0.12d | Cláudio Esperança; Diogo Serra | 1.5h | 1.5h |
| 51 | 1.2.2 | **Preparação de ambiente de testes** | 55d | 2013-03-25 19:30 A | 2013-06-11 00:00 A |  | 100% | 2013-03-25 19:00 | 2013-06-06 23:42 | 53d |  | 27h | 27h |
| 52 | 1.2.2.1 | Criação de máquinas virtuais | 0.25d | 2013-03-25 19:30 A | 2013-03-25 21:30 A | 47 | 100% | 2013-03-25 19:00 | 2013-03-25 21:00 | 0.25d | Diogo Serra | 2h | 2h |
| 53 | 1.2.2.2 | Instalação de software | 0.38d | 2013-04-18 21:15 A | 2013-04-22 20:15 A | 52 | 100% | 2013-04-18 19:45 | 2013-04-22 18:45 | 0.38d | Diogo Serra | 3h | 3h |

| ID | WBS | Task | Duration | Start | Finish | Predecessors | Complete | Baseline start | Baseline finish | Baseline duration | Resources | Work | Actual work |
| --- | --- | --- | --- | --- | --- | --- | --- | --- | --- | --- | --- | --- | --- |
| 54 | 1.2.2.3 | **Desenvolvimento de spikes** | 55d | 2013-03-25 22:30 A | 2013-06-11 00:00 A |  | 100% | 2013-03-25 21:00 | 2013-06-06 23:42 | 53d |  | 22h | 22h |
| 55 | 1.2.2.3.1 | Zendframework | 0.75d | 2013-03-25 22:30 A | 2013-03-28 22:30 A | 52 | 100% | 2013-03-25 21:00 | 2013-03-28 20:00 | 0.62d | Cláudio Esperança | 6h | 6h |
| 56 | 1.2.2.3.2 | WSO2Carbon | 0.38d | 2013-04-22 20:15 A | 2013-04-22 23:15 A | 52 | 100% | 2013-04-22 18:45 | 2013-04-22 19:45 | 0.12d | Diogo Serra | 3h | 3h |
| 57 | 1.2.2.3.3 | Propel | 0.12d | 2013-04-22 21:15 A | 2013-04-22 22:15 A | 52 | 100% | 2013-04-22 19:45 | 2013-04-22 20:15 | 0.06d | Diogo Serra | 1h | 1h |
| 58 | 1.2.2.3.4 | Doctrine | 1.5d | 2013-06-06 18:00 A | 2013-06-11 00:00 A | 52 | 100% | 2013-06-03 23:42 | 2013-06-06 23:42 | 0.75d | Cláudio Esperança | 12h | 12h |
| 59 | 1.2.3 | **Análise Arquitectura** | 35d | 2013-04-08 18:30 A | 2013-05-27 23:42 A |  | 100% | 2013-03-28 20:00 | 2013-05-27 21:42 | 42d |  | 14h | 14h |
| 60 | 1.2.3.1 | Análise BD | 0.62d | 2013-05-27 18:42 A | 2013-05-27 23:42 A |  | 100% | 2013-05-27 18:42 | 2013-05-27 21:42 | 0.38d | Cláudio Esperança | 5h | 5h |
| 61 | 1.2.3.2 | SOA | 0.25d | 2013-04-22 23:45 A | 2013-04-25 23:45 A | 56 | 100% | 2013-04-22 20:15 | 2013-04-25 20:15 | 0.25d | Cláudio Esperança; Diogo Serra | 2h | 2h |
| 62 | 1.2.3.3 | ZendFramework | 0.38d | 2013-04-08 18:30 A | 2013-04-08 21:30 A | 55 | 100% | 2013-03-28 20:00 | 2013-03-28 23:00 | 0.38d | Cláudio Esperança | 3h | 3h |
| 63 | 1.2.3.4 | Politicas de segurança | 0.5d | 2013-04-08 21:30 A | 2013-04-11 19:30 A | 62 | 100% | 2013-03-28 23:00 | 2013-04-01 21:00 | 0.5d | Cláudio Esperança | 4h | 4h |
| 64 | 1.2.4 | **Desenvolvimento** | 52d | 2013-04-11 21:30 A | 2013-06-24 20:12 A |  | 100% | 2013-04-01 21:00 | 2013-05-27 21:30 | 40d |  | 94h | 94h |
| 65 | 1.2.4.1 | **Camadas** | 52d | 2013-04-11 21:30 A | 2013-06-24 20:12 A |  | 100% | 2013-04-01 21:00 | 2013-05-27 21:30 | 40d |  | 94h | 94h |
| 66 | 1.2.4.1.1 | **Componentes e Serviços** | 42d | 2013-04-11 21:30 A | 2013-06-11 00:00 A |  | 100% | 2013-04-01 21:00 | 2013-05-20 22:00 | 35d |  | 66h | 66h |
| 67 | 1.2.4.1.1.1 | Integração doctrine e zendframework | 2.5d | 2013-04-11 21:30 A | 2013-04-22 23:30 A | 63 | 100% | 2013-04-01 21:00 | 2013-04-04 20:00 | 0.62d | Cláudio Esperança; Diogo Serra | 25h | 25h |
| 68 | 1.2.4.1.1.2 | **Implementação da arquitectura base da solução** | 17d | 2013-05-16 18:00 A | 2013-06-11 00:00 A |  | 100% | 2013-04-25 23:00 | 2013-05-20 22:00 | 17d |  | 41h | 41h |
| 69 | 1.2.4.1.1.2.1 | Serviço base | 4.38d | 2013-05-16 18:00 A | 2013-06-03 23:00 A | 67 | 100% | 2013-04-25 23:00 | 2013-05-16 22:00 | 4.38d | Cláudio Esperança | 35h | 35h |
| 70 | 1.2.4.1.1.2.2 | Mecanismos de segurança | 0.75d | 2013-06-10 18:00 A | 2013-06-11 00:00 A | 69 | 100% | 2013-05-20 18:00 | 2013-05-20 22:00 | 0.5d | Cláudio Esperança | 6h | 6h |
| 71 | 1.2.4.1.2 | BPM - Process Maker | 2.5d | 2013-06-13 18:12 A | 2013-06-24 20:12 A | 70 | 100% | 2013-05-20 22:12 | 2013-05-27 21:30 | 1.29d | Cláudio Esperança; Diogo Serra | 28h | 28h |
| 72 | 1.2.5 | **Entregas** | 10d | 2013-06-13 18:00 A | 2013-06-27 22:42 A |  | 100% | 2013-05-20 22:00 | 2013-06-03 20:30 | 10d |  | 25.5h | 25.5h |
| 73 | 1.2.5.1 | Documentação técnica | 1.9d | 2013-06-20 18:30 A | 2013-06-27 22:42 A | 70 | 100% | 2013-05-27 22:30 | 2013-06-03 20:30 | 1.12d | Cláudio Esperança; Diogo Serra | 22.5h | 22.5h |
| 74 | 1.2.5.2 | Solução (Máq. Virtuais) | 0.38d | 2013-06-13 18:00 A | 2013-06-20 18:30 A | 70 | 100% | 2013-05-20 22:00 | 2013-05-27 22:30 | 0.38d | Diogo Serra | 3h | 3h |
| 75 | 1.2.6 | Colocação em Produção | 0.66d | 2013-06-27 18:00 A | 2013-06-27 23:15 A | 74 | 100% | 2013-06-03 20:30 | 2013-06-03 23:15 | 0.34d | Cláudio Esperança; Diogo Serra | 10h | 10h |
